How a schedule from MS Project changed from version to version. A marks actual dates.

## Version 1 (saved 2014-05-05)

Note of the change: SEPR2

| ID | WBS | Task | Duration | Start | Finish | Predecessors | Total float |
| --- | --- | --- | --- | --- | --- | --- | --- |
| 1 | 1 | **Spezifikationsphase** | 18d? | 2006-10-27 | 2006-11-21 |  | 0d |
| 2 | 1.1 | **Ist-Analyse** | 4d | 2006-10-27 | 2006-11-01 |  | 0d |
| 3 |  | Stakeholder-Interviews durchführen | 4d | 2006-10-27 | 2006-11-01 |  | 0d |
| 4 |  | Stakeholder-Analyse erstellen | 4d | 2006-10-27 | 2006-11-01 | 3SS | 0d |
| 5 |  | Ist-Anwendungsfall-Analyse erstellen | 2d | 2006-10-27 | 2006-10-30 |  | 2d |
| 6 | 1.2 | **Soll-Analyse** | 8d? | 2006-11-02 | 2006-11-13 | 2 | 0d |
| 7 |  | Anforderungsanalyse | 6d | 2006-11-06 | 2006-11-13 | 13FF+1d, 8SS | 0d |
| 8 |  | Anforderungsworkshop | 1d? | 2006-11-02 | 2006-11-02 |  | 0d |
| 9 |  | Anforderungsworkshop "Reservierungen" planen/durchführen | 1d? | 2006-11-03 | 2006-11-03 | 8 | 0d |
| 10 |  | Abstimmungsworkshop "Ankunft"planen/durchführen | 1d? | 2006-11-06 | 2006-11-06 | 9 | 0d |
| 11 |  | Abstimmungsworkshop "Aufenthalt"planen/durchführen | 1d? | 2006-11-07 | 2006-11-07 | 10 | 0d |
| 12 |  | Abstimmungsworkshop "Abreise" planen/durchführen | 1d? | 2006-11-08 | 2006-11-08 | 11 | 0d |
| 13 |  | Lastenheft erstellen | 2d | 2006-11-09 | 2006-11-10 | 12 | 0d |
| 14 | 1.3 | **Pflichtenheft** | 3d? | 2006-11-14 | 2006-11-16 | 6 | 0d |
| 15 |  | Fachliches Datenmodell erstellen | 1d? | 2006-11-14 | 2006-11-14 |  | 1d |
| 16 |  | Fachliche Architektur erstellen | 1d? | 2006-11-15 | 2006-11-15 | 15 | 1d |
| 17 |  | Geschäftsprozesse modellieren | 1d? | 2006-11-14 | 2006-11-14 |  | 1d |
| 18 |  | Anwendungsfälle modellieren | 1d? | 2006-11-15 | 2006-11-15 | 17 | 1d |
| 19 |  | Mockups erstellen | 1d? | 2006-11-14 | 2006-11-14 |  | 0d |
| 20 |  | Mockups mit dem Kunden abstimmen | 1d? | 2006-11-15 | 2006-11-15 | 19 | 0d |
| 21 |  | Dialoge spezifizieren | 1d? | 2006-11-16 | 2006-11-16 | 20 | 0d |
| 22 |  | Fachliche Testfälle definieren | 2d | 2006-11-14 | 2006-11-15 |  | 1d |
| 23 |  | Aufwandsschätzung durchführen | 1.5d? | 2006-11-17 | 2006-11-20 | 14 | 0d |
| 24 |  | Angebot schreiben | 1.5d? | 2006-11-20 | 2006-11-21 | 23 | 0d |
| 25 | 2 | **Entwurfsphase** | 8.5d? | 2006-11-22 | 2006-12-04 | 24 | 0d |
| 26 |  | ER-Diagramm | 3d | 2006-11-22 | 2006-11-24 |  | 0d |
| 27 |  | Komponentenmodell erstellen | 1d? | 2006-11-27 | 2006-11-27 | 26 | 0d |
| 28 |  | Komponenteninnensichten | 2d | 2006-11-28 | 2006-11-29 | 27 | 0d |
| 29 |  | Schnittestellen definieren | 1d? | 2006-11-30 | 2006-11-30 | 28 | 0d |
| 30 |  | UML-Sequenzdiagramm erstellen | 1.5d? | 2006-12-01 | 2006-12-04 | 29 | 0d |
| 31 | 3 | **Implementationsphase** | 2d? | 2006-12-04 | 2006-12-06 | 25 | 0d |
| 32 |  | Tests implementieren | 1d? | 2006-12-04 | 2006-12-05 |  | 0d |
| 33 |  | Kundenkomponente implementieren | 1d? | 2006-12-05 | 2006-12-06 | 32 | 11d |
| 34 |  | Mitarbeiterkomponente implementieren | 1d? | 2006-12-05 | 2006-12-06 | 32 | 11d |
| 35 |  | Reservierungskomponente implementieren | 1d? | 2006-12-05 | 2006-12-06 | 32 | 11d |
| 36 |  | Zimmerkomponente implementieren | 1d? | 2006-12-05 | 2006-12-06 | 32 | 11d |
| 37 |  | Buchhaltungskomponente implementieren | 1d? | 2006-12-05 | 2006-12-06 | 32 | 11d |
| 38 |  | Hotelsystem-Fassade implementieren | 1d? | 2006-12-05 | 2006-12-06 | 32 | 0d |
| 39 | 4 | **Testphase** | 11d? | 2006-12-06 | 2006-12-21 | 38 | 0d |
| 40 |  | Bugs fixen | 1d? | 2006-12-20 | 2006-12-21 | 46FF+5d | 0d |
| 41 |  | Modultests durchführen | 1d? | 2006-12-06 | 2006-12-07 |  | 0d |
| 42 |  | Komponententests durchführen | 1d? | 2006-12-07 | 2006-12-08 | 41 | 0d |
| 43 |  | Integrationstests durchführen | 1d? | 2006-12-08 | 2006-12-11 | 42 | 0d |
| 44 |  | Systemtestsdurchführen | 1d? | 2006-12-11 | 2006-12-12 | 43 | 0d |
| 45 |  | Verbundstests durchführen | 1d? | 2006-12-12 | 2006-12-13 | 44 | 0d |
| 46 |  | Abnahmetests durchführen | 1d? | 2006-12-13 | 2006-12-14 | 45 | 0d |

## Version 2 (saved 2014-05-08)

Note of the change: SE2 Abnahme

Last finish 2006-12-21 → 2014-08-18 (+2797d).

Added:

| ID | Task | Duration | Start | Finish | Predecessors | Resources |
| --- | --- | --- | --- | --- | --- | --- |
| 25 | Meilenstein - Spezifikationsphase abgeschlossen | 0d | 2014-06-11 | 2014-06-11 | 24FS+5d |  |
| 26 | Angebotsworkshop mit dem Kunden durchführen | 2d? | 2014-06-12 | 2014-06-13 | 25 | Stephen Hawkins [50%] |
| 27 | Änderungen nach Kundenwünschen durchführen | 2d? | 2014-06-16 | 2014-06-17 | 26 | Grace Hopper; Isaac Newton; Lisa Simpson; Maurice Moss; Stephen Hawkins [50%] |
| 28 | Review zur Spezifikationsphase durchführen | 0.56d? | 2014-06-18 | 2014-06-18 | 27 | Grace Hopper; Isaac Newton; Lisa Simpson; Maurice Moss; Stephen Hawkins [50%] |
| 35 | Abnahme vom Chefarchitekten | 2d? | 2014-07-01 | 2014-07-03 | 34 | Stephen Hawkins [50%] |
| 36 | Korrekturen durchführen | 2.75d | 2014-07-03 | 2014-07-07 | 35 | Grace Hopper [50%]; Isaac Newton [50%]; Lisa Simpson [50%]; Maurice Moss [50%] |
| 37 | Meilenstein - Entwurfsphase abgeschlossen | 0d | 2014-07-11 | 2014-07-11 | 36FS+4d |  |
| 38 | Rücksprache-Workshop mit Kunde | 2d | 2014-07-11 | 2014-07-15 | 37 | Stephen Hawkins [50%] |
| 39 | Änderungen nach Kundenwünschen durchführen | 1d? | 2014-07-15 | 2014-07-16 | 38 | Grace Hopper; Isaac Newton; Lisa Simpson; Maurice Moss; Stephen Hawkins [50%] |
| 40 | Review zur Entwurfsphase | 0.56d? | 2014-07-16 | 2014-07-17 | 39 | Grace Hopper; Isaac Newton; Lisa Simpson; Maurice Moss; Stephen Hawkins [50%] |
| 49 | Meilenstein - Implementationsphase abgeschlossen | 0d | 2014-07-21 | 2014-07-21 | 48 |  |
| 50 | Rücksprache-Workshop mit Kunde | 1d | 2014-07-21 | 2014-07-22 | 49 |  |
| 51 | Änderungen nach Kundenwünschen durchführen | 1d? | 2014-07-22 | 2014-07-23 | 50 |  |
| 52 | Review zur Implementationsphase | 1d? | 2014-07-23 | 2014-07-24 | 51 |  |
| 60 | Meilenstein - Testphase abgeschlossen | 0d | 2014-08-08 | 2014-08-08 | 59 |  |
| 61 | Rücksprache-Workshop mit Kunde | 1d? | 2014-08-08 | 2014-08-11 | 60 |  |
| 62 | Akzeptanztests mit dem Kunden machen | 1d? | 2014-08-11 | 2014-08-12 | 61 |  |
| 63 | Korrekturen durchführen | 1d? | 2014-08-12 | 2014-08-13 | 62 |  |
| 65 | Abschlussreview durchfüren | 1d? | 2014-08-14 | 2014-08-15 | 64 |  |
| 66 | Abschlussdokument erstellen | 1d? | 2014-08-15 | 2014-08-18 | 65 |  |

Changed:

| ID | Task | Start | Finish | Duration | Total float | Predecessors | Other |
| --- | --- | --- | --- | --- | --- | --- | --- |
| 1 | **Spezifikationsphase** | 2006-10-27 → 2014-05-12 (+2754d) | 2006-11-21 → 2014-06-18 (+2766d) | 18d? → 27.56d? |  |  |  |
| 2 | **Ist-Analyse** | 2006-10-27 → 2014-05-12 (+2754d) | 2006-11-01 → 2014-05-15 (+2752d) |  |  |  |  |
| 3 | Stakeholder-Interviews durchführen | 2006-10-27 → 2014-05-12 (+2754d) | 2006-11-01 → 2014-05-15 (+2752d) |  |  |  | resources none → Lisa Simpson [50%] |
| 4 | Stakeholder-Analyse erstellen | 2006-10-27 → 2014-05-12 (+2754d) | 2006-11-01 → 2014-05-15 (+2752d) |  |  |  | resources none → Lisa Simpson [50%] |
| 5 | Ist-Anwendungsfall-Analyse erstellen | 2006-10-27 → 2014-05-12 (+2754d) | 2006-10-30 → 2014-05-13 (+2752d) |  |  |  | resources none → Grace Hopper [50%] |
| 6 | **Soll-Analyse** | 2006-11-02 → 2014-05-16 (+2752d) | 2006-11-13 → 2014-05-26 (+2751d) | 8d? → 7d? |  |  |  |
| 7 | Anforderungsanalyse | 2006-11-06 → 2014-05-19 (+2751d) | 2006-11-13 → 2014-05-26 (+2751d) |  |  |  | resources none → Stephen Hawkins [25%] |
| 8 | Anforderungsworkshop | 2006-11-02 → 2014-05-16 (+2752d) | 2006-11-02 → 2014-05-16 (+2752d) |  |  |  | resources none → Maurice Moss |
| 9 | Anforderungsworkshop "Reservierungen" planen/durchführen | 2006-11-03 → 2014-05-19 (+2754d) | 2006-11-03 → 2014-05-19 (+2754d) |  |  |  | resources none → Maurice Moss |
| 10 | Abstimmungsworkshop "Ankunft"planen/durchführen | 2006-11-06 → 2014-05-20 (+2752d) | 2006-11-06 → 2014-05-20 (+2752d) |  |  |  | resources none → Maurice Moss |
| 11 | Abstimmungsworkshop "Aufenthalt"planen/durchführen | 2006-11-07 → 2014-05-21 (+2752d) | 2006-11-07 → 2014-05-21 (+2752d) |  |  |  | resources none → Maurice Moss |
| 12 | Abstimmungsworkshop "Abreise" planen/durchführen | 2006-11-08 → 2014-05-22 (+2752d) | 2006-11-08 → 2014-05-22 (+2752d) |  |  |  | resources none → Maurice Moss |
| 13 | Lastenheft erstellen | 2006-11-09 → 2014-05-23 (+2752d) | 2006-11-10 → 2014-05-23 (+2751d) | 2d → 1d |  |  | resources none → Maurice Moss |
| 14 | **Pflichtenheft** | 2006-11-14 → 2014-05-27 (+2751d) | 2006-11-16 → 2014-05-29 (+2751d) |  |  |  |  |
| 15 | Fachliches Datenmodell erstellen | 2006-11-14 → 2014-05-27 (+2751d) | 2006-11-14 → 2014-05-27 (+2751d) |  |  |  | resources none → Isaac Newton [50%] |
| 16 | Fachliche Architektur erstellen | 2006-11-15 → 2014-05-28 (+2751d) | 2006-11-15 → 2014-05-28 (+2751d) |  |  |  | resources none → Isaac Newton [50%] |
| 17 | Geschäftsprozesse modellieren | 2006-11-14 → 2014-05-27 (+2751d) | 2006-11-14 → 2014-05-27 (+2751d) |  |  |  | resources none → Lisa Simpson |
| 18 | Anwendungsfälle modellieren | 2006-11-15 → 2014-05-28 (+2751d) | 2006-11-15 → 2014-05-28 (+2751d) |  |  |  | resources none → Maurice Moss [50%] |
| 19 | Mockups erstellen | 2006-11-14 → 2014-05-27 (+2751d) | 2006-11-14 → 2014-05-27 (+2751d) |  |  |  | resources none → Maurice Moss [50%] |
| 20 | Mockups mit dem Kunden abstimmen | 2006-11-15 → 2014-05-28 (+2751d) | 2006-11-15 → 2014-05-28 (+2751d) |  |  |  | resources none → Lisa Simpson [50%] |
| 21 | Dialoge spezifizieren | 2006-11-16 → 2014-05-29 (+2751d) | 2006-11-16 → 2014-05-29 (+2751d) |  |  |  | resources none → Maurice Moss |
| 22 | Fachliche Testfälle definieren | 2006-11-14 → 2014-05-27 (+2751d) | 2006-11-15 → 2014-05-28 (+2751d) |  |  |  | resources none → Maurice Moss [50%] |
| 23 | Aufwandsschätzung durchführen | 2006-11-17 → 2014-05-30 (+2751d) | 2006-11-20 → 2014-06-02 (+2751d) | 1.5d? → 2d? |  |  | resources none → Stephen Hawkins [50%] |
| 24 | Angebot schreiben | 2006-11-20 → 2014-06-03 (+2752d) | 2006-11-21 → 2014-06-04 (+2752d) | 1.5d? → 2d |  |  | resources none → Stephen Hawkins [50%] |
| 29 | **Entwurfsphase** | 2006-11-22 → 2014-06-18 (+2765d) | 2006-12-04 → 2014-07-17 (+2782d) | 8.5d? → 20.81d? |  | 24 → 28 |  |
| 30 | ER-Diagramm | 2006-11-22 → 2014-06-18 (+2765d) | 2006-11-24 → 2014-06-23 (+2768d) |  |  |  | resources none → Grace Hopper [66.7%] |
| 31 | Komponentenmodell erstellen | 2006-11-27 → 2014-06-23 (+2765d) | 2006-11-27 → 2014-06-24 (+2766d) |  |  |  | resources none → Lisa Simpson [50%] |
| 32 | Komponenteninnensichten | 2006-11-28 → 2014-06-24 (+2765d) | 2006-11-29 → 2014-06-26 (+2766d) |  |  |  | resources none → Lisa Simpson [75%] |
| 33 | Schnittestellen definieren | 2006-11-30 → 2014-06-26 (+2765d) | 2006-11-30 → 2014-06-27 (+2766d) |  |  |  | resources none → Isaac Newton [50%] |
| 34 | UML-Sequenzdiagramm erstellen | 2006-12-01 → 2014-06-27 (+2765d) | 2006-12-04 → 2014-07-01 (+2766d) |  |  |  | resources none → Maurice Moss [66.7%] |
| 41 | **Implementationsphase** | 2006-12-04 → 2014-07-17 (+2782d) | 2006-12-06 → 2014-07-24 (+2787d) | 2d? → 5d? |  |  |  |
| 42 | Tests implementieren | 2006-12-04 → 2014-07-17 (+2782d) | 2006-12-05 → 2014-07-18 (+2782d) |  |  |  |  |
| 43 | Kundenkomponente implementieren | 2006-12-05 → 2014-07-18 (+2782d) | 2006-12-06 → 2014-07-21 (+2784d) |  | 11d → 20d |  |  |
| 44 | Mitarbeiterkomponente implementieren | 2006-12-05 → 2014-07-18 (+2782d) | 2006-12-06 → 2014-07-21 (+2784d) |  | 11d → 20d |  |  |
| 45 | Reservierungskomponente implementieren | 2006-12-05 → 2014-07-18 (+2782d) | 2006-12-06 → 2014-07-21 (+2784d) |  | 11d → 20d |  |  |
| 46 | Zimmerkomponente implementieren | 2006-12-05 → 2014-07-18 (+2782d) | 2006-12-06 → 2014-07-21 (+2784d) |  | 11d → 20d |  |  |
| 47 | Buchhaltungskomponente implementieren | 2006-12-05 → 2014-07-18 (+2782d) | 2006-12-06 → 2014-07-21 (+2784d) |  | 11d → 20d |  |  |
| 48 | Hotelsystem-Fassade implementieren | 2006-12-05 → 2014-07-18 (+2782d) | 2006-12-06 → 2014-07-21 (+2784d) |  |  |  |  |
| 53 | **Testphase** | 2006-12-06 → 2014-07-24 (+2787d) | 2006-12-21 → 2014-08-18 (+2797d) | 11d? → 17d? |  | 48 → 52 |  |
| 54 | Modultests durchführen | 2006-12-06 → 2014-07-24 (+2787d) | 2006-12-07 → 2014-07-25 (+2787d) |  |  |  |  |
| 55 | Komponententests durchführen | 2006-12-07 → 2014-07-25 (+2787d) | 2006-12-08 → 2014-07-28 (+2789d) |  |  |  |  |
| 56 | Integrationstests durchführen | 2006-12-08 → 2014-07-28 (+2789d) | 2006-12-11 → 2014-07-29 (+2787d) |  |  |  |  |
| 57 | Systemtestsdurchführen | 2006-12-11 → 2014-07-29 (+2787d) | 2006-12-12 → 2014-07-30 (+2787d) |  |  |  |  |
| 58 | Verbundstests durchführen | 2006-12-12 → 2014-07-30 (+2787d) | 2006-12-13 → 2014-07-31 (+2787d) |  |  |  |  |
| 59 | Bugs fixen | 2006-12-20 → 2014-08-07 (+2787d) | 2006-12-21 → 2014-08-08 (+2787d) |  |  | 64FF+5d → 58FS+5d |  |
| 64 | Abnahmetests durchführen | 2006-12-13 → 2014-08-13 (+2800d) | 2006-12-14 → 2014-08-14 (+2800d) |  |  | 58 → 63 |  |
